# https://northeastern-my.sharepoint.com/personal/cohn_el_northeastern_edu/Documents/Project Risk Management/FINALAtriumHospitalityHotelRenovationWBS

Schedule from MS Project, 2022-04-22 to 2023-12-15, costs in $.

## Calendars

- Standard: Mon-Fri 08:00-12:00, 13:00-17:00; Sat-Sun off.

## Resources

| Resource | Rate |
| --- | --- |
| Project Manager |  |
| Designer 1 | 100 |
| Designer 2 | 100 |
| Designer 3 | 100 |
| Sponsor |  |
| Compset Researcher | 100 |
| Local Researcher | 100 |
| Guestroom Materials | 1600000 |
| Contingency |  |
| Lobby Materials | 500000 |
| Meeting Space Materials | 900000 |
| Assistant Project Management | 75 |
| Guestroom Construction Manager | 100 |
| Lobby Construction Manager | 100 |
| Meeting Space Construction Manager | 100 |
| Construction Worker 1 | 30 |
| Construction Worker 2 | 30 |
| Construction Worker 3 | 30 |
| Construction Worker 4 | 30 |
| Materials Manager | 50 |
| Assistant Construction Manager | 55 |
| Conference Room | 1000 |
| Catering | 3000 |

## Schedule

| ID | WBS | Task | Duration | Start | Finish | Predecessors | Total slack | Free slack | Resources | Work | Cost |
| --- | --- | --- | --- | --- | --- | --- | --- | --- | --- | --- | --- |
| 1 | 1 | Assign Project Manager | 1d | 2022-04-22 | 2022-04-22 |  | 0d |  | Project Manager | 8h |  |
| 2 | 2 | Receive Business Case | 1d | 2022-04-25 | 2022-04-25 | 1 | 0d |  | Project Manager | 8h |  |
| 3 | 3 | Hold Kickoff Meeting | 1d | 2022-04-26 | 2022-04-26 | 2 | 0d |  | Project Manager; Assistant Construction Manager; Assistant Project Management; Compset Researcher; Designer 1; Designer 2; Designer 3; Guestroom Construction Manager; Lobby Construction Manager; Local Researcher; Materials Manager; Meeting Space Construction Manager; Sponsor; Catering; Conference Room | 104h | 11,840 |
| 4 | 4 | **Project Documentation** | 43d | 2022-04-27 | 2022-06-24 | 3 | 0d |  |  | 1864h | 598,400 |
| 5 | 4.1 | **Integration Management** | 6d | 2022-04-27 | 2022-05-04 |  | 422d |  |  | 88h | 3,000 |
| 6 | 4.1.1 | Document Integration Management Process | 5d | 2022-04-27 | 2022-05-03 | 3 | 421d | 0d | Project Manager; Assistant Project Management | 80h | 3,000 |
| 7 | 4.1.2 | Approve Integration Management Process | 1d | 2022-05-04 | 2022-05-04 | 6 | 420d |  | Sponsor | 8h |  |
| 8 | 4.2 | **Scope Management** | 5d | 2022-04-27 | 2022-05-03 |  | 423d |  |  | 72h | 2,400 |
| 9 | 4.2.1 | Document Project Scope Management | 4d | 2022-04-27 | 2022-05-02 | 3 | 422d | 0d | Project Manager; Assistant Project Management | 64h | 2,400 |
| 10 | 4.2.2 | Approve Project Scope Management | 1d | 2022-05-03 | 2022-05-03 | 9 | 421d |  | Sponsor | 8h |  |
| 11 | 4.3 | **Schedule Management** | 6d | 2022-04-27 | 2022-05-04 |  | 422d |  |  | 88h | 3,000 |
| 12 | 4.3.1 | Document Project Schedule Management | 5d | 2022-04-27 | 2022-05-03 | 3 | 421d | 0d | Project Manager; Assistant Project Management | 80h | 3,000 |
| 13 | 4.3.2 | Approve Project Schedule Management | 1d | 2022-05-04 | 2022-05-04 | 12 | 420d |  | Sponsor | 8h |  |
| 14 | 4.4 | **Cost Management** | 8d | 2022-04-27 | 2022-05-06 |  | 0d |  |  | 184h | 507,000 |
| 15 | 4.4.1 | Document Cost Management | 7d | 2022-04-27 | 2022-05-05 | 3 | 0d |  | Project Manager; Assistant Project Management; Materials Manager | 168h | 7,000 |
| 16 | 4.4.2 | Assign Contingency Reserve | 1d | 2022-04-27 | 2022-04-27 | 3 | 425d |  | Project Manager; Contingency [0.1%] | 8h | 500,000 |
| 17 | 4.4.3 | Approve Cost Management | 1d | 2022-05-06 | 2022-05-06 | 15 | 0d |  | Sponsor | 8h |  |
| 18 | 4.5 | **Quality Management** | 4d | 2022-05-09 | 2022-05-12 |  | 0d |  |  | 56h | 1,800 |
| 19 | 4.5.1 | Document Quality Management Control Measures | 3d | 2022-05-09 | 2022-05-11 | 17 | 0d |  | Project Manager; Assistant Project Management | 48h | 1,800 |
| 20 | 4.5.2 | Approve Quality Management Control Measures | 1d | 2022-05-12 | 2022-05-12 | 19 | 414d |  | Sponsor | 8h |  |
| 21 | 4.6 | **Resource Management** | 4d | 2022-05-12 | 2022-05-17 |  | 413d |  |  | 80h | 3,000 |
| 22 | 4.6.1 | Document Resource Management | 3d | 2022-05-12 | 2022-05-16 | 19 | 412d | 0d | Project Manager; Assistant Project Management; Materials Manager | 72h | 3,000 |
| 23 | 4.6.2 | Approve Resource Management | 1d | 2022-05-17 | 2022-05-17 | 22 | 411d |  | Sponsor | 8h |  |
| 24 | 4.7 | **Communication Management** | 3d | 2022-05-12 | 2022-05-16 |  | 0d |  |  | 40h | 1,200 |
| 25 | 4.7.1 | Document Communication Management Plan | 2d | 2022-05-12 | 2022-05-13 | 19 | 0d |  | Project Manager; Assistant Project Management | 32h | 1,200 |
| 26 | 4.7.2 | Approve Communication Management Plan | 1d | 2022-05-16 | 2022-05-16 | 25 | 0d |  | Sponsor | 8h |  |

| ID | WBS | Task | Type | Duration | Start | Finish | Predecessors | Total slack | Free slack | Resources | Work | Cost |
| --- | --- | --- | --- | --- | --- | --- | --- | --- | --- | --- | --- | --- |
| 27 | 4.8 | **Risk Management** |  | 24d | 2022-05-17 | 2022-06-17 |  | 0d |  |  | 1168h | 74,400 |
| 28 | 4.8.1 | **Identifiation** |  | 11d | 2022-05-17 | 2022-05-31 |  | 0d |  |  | 968h | 68,400 |
| 29 | 4.8.1.1 | Brainstorm Risks |  | 10d | 2022-05-17 | 2022-05-30 | 26 | 0d |  | Assistant Construction Manager; Assistant Project Management; Designer 1; Designer 2; Designer 3; Guestroom Construction Manager; Lobby Construction Manager; Materials Manager; Meeting Space Construction Manager; Project Manager | 800h | 62,400 |
| 30 | 4.8.1.2 | Create Risk Register |  | 10d | 2022-05-17 | 2022-05-30 | 29SS | 0d |  | Assistant Project Management; Project Manager | 160h | 6,000 |
| 31 | 4.8.1.3 | Approve Risk Register |  | 1d | 2022-05-31 | 2022-05-31 | 30 | 0d |  | Sponsor | 8h |  |
| 32 | 4.8.2 | **Risk Analysis** |  | 7d | 2022-06-01 | 2022-06-09 |  | 0d |  |  | 104h | 3,600 |
| 33 | 4.8.2.1 | Document Risk Analysis |  | 6d | 2022-06-01 | 2022-06-08 | 31 | 0d |  | Assistant Project Management; Project Manager | 96h | 3,600 |
| 34 | 4.8.2.2 | Approve Risk Analysis |  | 1d | 2022-06-09 | 2022-06-09 | 33 | 0d |  | Sponsor | 8h |  |
| 35 | 4.8.3 | **Risk Prioritization** |  | 3d | 2022-06-10 | 2022-06-14 |  | 0d |  |  | 56h | 1,200 |
| 36 | 4.8.3.1 | Prioritze Risks |  | 2d | 2022-06-10 | 2022-06-13 | 34 | 0d |  | Project Manager; Assistant Project Management; Sponsor | 48h | 1,200 |
| 37 | 4.8.3.2 | Approve Risk Prioritization |  | 1d | 2022-06-14 | 2022-06-14 | 36 | 0d |  | Sponsor | 8h |  |
| 38 | 4.8.4 | **Risk Management Plan** |  | 3d | 2022-06-15 | 2022-06-17 |  | 0d |  |  | 40h | 1,200 |
| 39 | 4.8.4.1 | Document Risk Management Plan |  | 2d | 2022-06-15 | 2022-06-16 | 37 | 0d |  | Project Manager; Assistant Project Management | 32h | 1,200 |
| 40 | 4.8.4.2 | Approve Risk Management Plan |  | 1d | 2022-06-17 | 2022-06-17 | 39 | 0d |  | Sponsor | 8h |  |
| 41 | 4.9 | **Procurement Management** |  | 3d | 2022-06-20 | 2022-06-22 |  | 0d |  |  | 56h | 2,000 |
| 42 | 4.9.1 | Document Procurement Management Strategy |  | 2d | 2022-06-20 | 2022-06-21 | 40 | 0d |  | Project Manager; Assistant Project Management; Materials Manager | 48h | 2,000 |
| 43 | 4.9.2 | Approve Procurement Management Strategy |  | 1d | 2022-06-22 | 2022-06-22 | 42 | 0d |  | Sponsor | 8h |  |
| 44 | 4.10 | **Stakeholder Management** |  | 2d | 2022-06-23 | 2022-06-24 |  | 0d |  |  | 32h | 600 |
| 45 | 4.10.1 | Document Stakeholder Management Plan |  | 1d | 2022-06-23 | 2022-06-23 | 43 | 0d |  | Project Manager; Assistant Project Management; Sponsor | 24h | 600 |
| 46 | 4.10.2 | Approve Stakeholder Management Plan |  | 1d | 2022-06-24 | 2022-06-24 | 45 | 0d |  | Sponsor | 8h |  |
| 47 | 4.11 | Project Documentation Complete | milestone | 0d | 2022-06-24 | 2022-06-24 | 46 | 0d |  |  |  |  |
| 48 | 5 | **Research** |  | 9d | 2022-06-27 | 2022-07-07 |  | 0d |  |  | 144h | 11,200 |
| 49 | 5.1 | **Compset Research** |  | 9d | 2022-06-27 | 2022-07-07 |  | 376d |  |  | 72h | 5,600 |
| 50 | 5.1.1 | Research Compset |  | 7d | 2022-06-27 | 2022-07-05 | 47 | 374d | 0d | Compset Researcher | 56h | 5,600 |
| 51 | 5.1.2 | Present Compset Research to Project Sponsor |  | 1d | 2022-07-06 | 2022-07-06 | 50 | 374d | 0d | Project Manager | 8h |  |
| 52 | 5.1.3 | Approve Compset Research |  | 1d | 2022-07-07 | 2022-07-07 | 51 | 374d | 0d | Sponsor | 8h |  |
| 53 | 5.1.4 | Compset Research Complete | milestone | 0d | 2022-07-07 | 2022-07-07 | 52 | 374d |  |  |  |  |

| ID | WBS | Task | Type | Duration | Start | Finish | Predecessors | Total slack | Free slack | Resources | Work | Cost |
| --- | --- | --- | --- | --- | --- | --- | --- | --- | --- | --- | --- | --- |
| 54 | 5.2 | **Current Location Research** |  | 9d | 2022-06-27 | 2022-07-07 |  | 0d |  |  | 72h | 5,600 |
| 55 | 5.2.1 | Research Current Location of Hotel to Determine Design Aesthetic |  | 7d | 2022-06-27 | 2022-07-05 | 47 | 0d |  | Local Researcher | 56h | 5,600 |
| 56 | 5.2.2 | Present Current Location Research to Project Sponsor |  | 1d | 2022-07-06 | 2022-07-06 | 55 | 0d |  | Project Manager | 8h |  |
| 57 | 5.2.3 | Approve Current Location Research |  | 1d | 2022-07-07 | 2022-07-07 | 56 | 0d |  | Sponsor | 8h |  |
| 58 | 5.2.4 | Current Location Research Complete | milestone | 0d | 2022-07-07 | 2022-07-07 | 57 | 0d |  |  |  |  |
| 59 | 5.3 | Research Complete | milestone | 0d | 2022-07-07 | 2022-07-07 | 58 | 0d |  |  |  |  |
| 60 | 6 | **Design** |  | 8d | 2022-07-08 | 2022-07-19 |  | 0d |  |  | 160h | 14,400 |
| 61 | 6.1 | **Design Option 1** |  | 6d | 2022-07-08 | 2022-07-15 |  | 370d |  |  | 48h | 4,800 |
| 62 | 6.1.1 | Create Guestroom Design 1 |  | 2d | 2022-07-08 | 2022-07-11 | 59 | 368d | 0d | Designer 1 | 16h | 1,600 |
| 63 | 6.1.2 | Create Lobby Design 1 |  | 2d | 2022-07-12 | 2022-07-13 | 62 | 368d | 0d | Designer 1 | 16h | 1,600 |
| 64 | 6.1.3 | Create Meeting Space Design 1 |  | 2d | 2022-07-14 | 2022-07-15 | 63 | 368d |  | Designer 1 | 16h | 1,600 |
| 65 | 6.2 | **Design Option 2** |  | 6d | 2022-07-08 | 2022-07-15 |  | 370d |  |  | 48h | 4,800 |
| 66 | 6.2.1 | Create Guestroom Design 2 |  | 2d | 2022-07-08 | 2022-07-11 | 59 | 368d | 0d | Designer 2 | 16h | 1,600 |
| 67 | 6.2.2 | Create Lobby Design 2 |  | 2d | 2022-07-12 | 2022-07-13 | 66 | 368d | 0d | Designer 2 | 16h | 1,600 |
| 68 | 6.2.3 | Create Meeting Space Design 2 |  | 2d | 2022-07-14 | 2022-07-15 | 67 | 368d |  | Designer 2 | 16h | 1,600 |
| 69 | 6.3 | **Design Option 3** |  | 6d | 2022-07-08 | 2022-07-15 |  | 0d |  |  | 48h | 4,800 |
| 70 | 6.3.1 | Create Guestroom Design 3 |  | 2d | 2022-07-08 | 2022-07-11 | 59 | 0d |  | Designer 3 | 16h | 1,600 |
| 71 | 6.3.2 | Create Lobby Design 3 |  | 2d | 2022-07-12 | 2022-07-13 | 70 | 0d |  | Designer 3 | 16h | 1,600 |
| 72 | 6.3.3 | Create Meeting Space Design 3 |  | 2d | 2022-07-14 | 2022-07-15 | 71 | 0d |  | Designer 3 | 16h | 1,600 |
| 73 | 6.4 | Present Design Options to Project Sponsor |  | 1d | 2022-07-18 | 2022-07-18 | 72 | 0d |  | Project Manager | 8h |  |
| 74 | 6.5 | Receive Sponsor Approval on Design Option 2 |  | 1d | 2022-07-19 | 2022-07-19 | 73 | 0d |  | Sponsor | 8h |  |
| 75 | 6.6 | Design Complete | milestone | 0d | 2022-07-19 | 2022-07-19 | 74 | 0d |  |  |  |  |
| 76 | 7 | **Refurbishment** |  | 359d | 2022-07-20 | 2023-12-04 |  | 0d |  |  | 24576h | 4,189,800 |
| 77 | 7.1 | Apply for Construction Permits |  | 2d | 2022-07-20 | 2022-07-21 | 75 | 364d | 0d | Project Manager | 16h |  |
| 78 | 7.2 | Construction Permits Received | milestone | 0d | 2022-07-21 | 2022-07-21 | 77 | 364d |  | Project Manager |  |  |
| 79 | 7.3 | Order Materials for Design Option 2 |  | 5d | 2022-07-20 | 2022-07-26 | 75 | 0d |  | Project Manager; Materials Manager | 80h | 2,000 |

| ID | WBS | Task | Type | Duration | Start | Finish | Predecessors | Total slack | Resources | Work | Cost |
| --- | --- | --- | --- | --- | --- | --- | --- | --- | --- | --- | --- |
| 80 | 7.4 | **Guestroom Refurbishment** |  | 290d | 2022-07-27 | 2023-09-05 |  | 0d |  | 17032h | 2,417,400 |
| 81 | 7.4.1 | Coordinate with Hotel Operations Staff to Shut Down Three Guestroom Floors at a Time for Refurbishment |  | 3d | 2022-07-27 | 2022-07-29 | 79 | 0d | Project Manager; Assistant Project Management | 48h | 1,800 |
| 82 | 7.4.2 | Demo Guestrooms on Top Floor |  | 5d | 2022-08-01 | 2022-08-05 | 81 | 0d | Construction Worker 1; Construction Worker 2; Construction Worker 3; Construction Worker 4; Guestroom Construction Manager; Assistant Construction Manager | 240h | 11,000 |
| 83 | 7.4.3 | Refurbish Guestrooms on Top Floor |  | 20d | 2022-08-08 | 2022-09-02 | 82 | 0d | Guestroom Materials [9%]; Construction Worker 1; Construction Worker 2; Construction Worker 3; Construction Worker 4; Guestroom Construction Manager; Materials Manager; Assistant Construction Manager; Assistant Project Management | 1280h | 208,000 |
| 84 | 7.4.4 | Receive Approval on Top Floor Guestrooms |  | 1d | 2022-09-05 | 2022-09-05 | 83 | 0d | Sponsor | 8h |  |
| 85 | 7.4.5 | Receive Inspection Sign Off on Top Floor Guestrooms |  | 1d | 2022-09-06 | 2022-09-06 | 84 | 331d | Project Manager; Assistant Project Management | 16h | 600 |
| 86 | 7.4.6 | Demo Guestrooms on 11th Floor |  | 5d | 2022-09-06 | 2022-09-12 | 84 | 0d | Construction Worker 1; Construction Worker 2; Construction Worker 3; Construction Worker 4; Guestroom Construction Manager; Assistant Construction Manager | 240h | 11,000 |
| 87 | 7.4.7 | Refurbish Guestrooms on |  | 20d | 2022-09-13 | 2022-10-10 | 86 | 0d | Guestroom Materials [9%]; Construction Worker 1; Construction Worker 2; Construction Worker 3; Construction Worker 4; Guestroom Construction Manager; Materials Manager; Assistant Construction Manager; Assistant Project Management | 1280h | 208,000 |
| 88 | 7.4.8 | Receive Approval on 11th Floor Guestrooms |  | 1d | 2022-10-11 | 2022-10-11 | 87 | 0d | Sponsor | 8h |  |
| 89 | 7.4.9 | Receive Inspection Sign Off on 11th Floor Guestrooms |  | 1d | 2022-10-12 | 2022-10-12 | 88 | 305d | Project Manager; Assistant Project Management | 16h | 600 |
| 90 | 7.4.10 | Demo Guestrooms on 10th Floor |  | 5d | 2022-10-12 | 2022-10-18 | 88 | 0d | Construction Worker 1; Construction Worker 2; Construction Worker 3; Construction Worker 4; Guestroom Construction Manager; Assistant Construction Manager | 240h | 11,000 |
| 91 | 7.4.11 | Refurbish Guestrooms on 10th Floor |  | 20d | 2022-10-19 | 2022-11-15 | 90 | 0d | Guestroom Materials [9%]; Construction Worker 1; Construction Worker 2; Construction Worker 3; Construction Worker 4; Guestroom Construction Manager; Materials Manager; Assistant Construction Manager; Assistant Project Management | 1280h | 208,000 |
| 92 | 7.4.12 | Receive Approval on 10th Floor Guestrooms |  | 1d | 2022-11-16 | 2022-11-16 | 91 | 0d | Sponsor | 8h |  |
| 93 | 7.4.13 | Receive Inspection Sign Off on 10th Floor Guestrooms |  | 1d | 2022-11-17 | 2022-11-17 | 92 | 279d | Project Manager; Assistant Project Management | 16h | 600 |
| 94 | 7.4.14 | Demo Guestrooms on 9th Floor |  | 5d | 2022-11-17 | 2022-11-23 | 92 | 0d | Construction Worker 1; Construction Worker 2; Construction Worker 3; Construction Worker 4; Guestroom Construction Manager; Assistant Construction Manager | 240h | 11,000 |
| 95 | 7.4.15 | Refurbish Guestrooms on 9th Floor |  | 20d | 2022-11-24 | 2022-12-21 | 94 | 0d | Guestroom Materials [9%]; Construction Worker 1; Construction Worker 2; Construction Worker 3; Construction Worker 4; Guestroom Construction Manager; Materials Manager; Assistant Construction Manager; Assistant Project Management | 1280h | 208,000 |
| 96 | 7.4.16 | Receive Approval on 9th Floor Guestrooms |  | 1d | 2022-12-22 | 2022-12-22 | 95 | 0d | Sponsor | 8h |  |
| 97 | 7.4.17 | Receive Inspection Sign Off on 9th Floor Guestrooms |  | 1d | 2022-12-23 | 2022-12-23 | 96 | 253d | Project Manager; Assistant Project Management | 16h | 600 |
| 98 | 7.4.18 | Demo Guestrooms on 8th Floor |  | 5d | 2022-12-23 | 2022-12-29 | 96 | 0d | Construction Worker 1; Construction Worker 2; Construction Worker 3; Construction Worker 4; Guestroom Construction Manager; Assistant Construction Manager | 240h | 11,000 |
| 99 | 7.4.19 | Refurbish Guestrooms on 8th Floor |  | 20d | 2022-12-30 | 2023-01-26 | 98 | 0d | Guestroom Materials [9%]; Construction Worker 1; Construction Worker 2; Construction Worker 3; Construction Worker 4; Guestroom Construction Manager; Materials Manager; Assistant Construction Manager; Assistant Project Management | 1280h | 208,000 |
| 100 | 7.4.20 | Receive Approval on 8th Floor Guestrooms |  | 1d | 2023-01-27 | 2023-01-27 | 99 | 0d | Sponsor | 8h |  |
| 101 | 7.4.21 | Receive Inspection Sign Off on 8th Floor Guestrooms |  | 1d | 2023-01-30 | 2023-01-30 | 100 | 227d | Project Manager; Assistant Project Management | 16h | 600 |
| 102 | 7.4.22 | Demo Guestrooms on 7th Floor |  | 5d | 2023-01-30 | 2023-02-03 | 100 | 0d | Construction Worker 1; Construction Worker 2; Construction Worker 3; Construction Worker 4; Guestroom Construction Manager; Assistant Construction Manager | 240h | 11,000 |
| 103 | 7.4.23 | Refurbish Guestrooms on 7th Floor |  | 20d | 2023-02-06 | 2023-03-03 | 102 | 0d | Guestroom Materials [9%]; Construction Worker 1; Construction Worker 2; Construction Worker 3; Construction Worker 4; Guestroom Construction Manager; Materials Manager; Assistant Construction Manager; Assistant Project Management | 1280h | 208,000 |
| 104 | 7.4.24 | Receive Approval on 7th Floor Guestrooms |  | 1d | 2023-03-06 | 2023-03-06 | 103 | 0d | Sponsor | 8h |  |
| 105 | 7.4.25 | Receive Inspection Sign Off on 7th Floor Guestrooms |  | 1d | 2023-03-07 | 2023-03-07 | 104 | 201d | Project Manager; Assistant Project Management | 16h | 600 |
| 106 | 7.4.26 | Demo Guestrooms on 6th Floor |  | 5d | 2023-03-07 | 2023-03-13 | 104 | 0d | Construction Worker 1; Construction Worker 2; Construction Worker 3; Construction Worker 4; Guestroom Construction Manager; Assistant Construction Manager | 240h | 11,000 |
| 107 | 7.4.27 | Refurbish Guestrooms on 6th Floor |  | 20d | 2023-03-14 | 2023-04-10 | 106 | 0d | Guestroom Materials [9%]; Construction Worker 1; Construction Worker 2; Construction Worker 3; Construction Worker 4; Guestroom Construction Manager; Materials Manager; Assistant Construction Manager; Assistant Project Management | 1280h | 208,000 |
| 108 | 7.4.28 | Receive Approval on 6th Floor Guestrooms |  | 1d | 2023-04-11 | 2023-04-11 | 107 | 0d | Sponsor | 8h |  |
| 109 | 7.4.29 | Receive Inspection Sign Off on 6th Floor Guestrooms |  | 1d | 2023-04-12 | 2023-04-12 | 108 | 175d | Project Manager; Assistant Project Management | 16h | 600 |
| 110 | 7.4.30 | Demo Guestrooms on 5th Floor |  | 5d | 2023-04-12 | 2023-04-18 | 108 | 0d | Construction Worker 1; Construction Worker 2; Construction Worker 3; Construction Worker 4; Guestroom Construction Manager; Assistant Construction Manager | 240h | 11,000 |
| 111 | 7.4.31 | Refurbish Guestrooms on 5th Floor |  | 20d | 2023-04-19 | 2023-05-16 | 110 | 0d | Guestroom Materials [9%]; Construction Worker 1; Construction Worker 2; Construction Worker 3; Construction Worker 4; Guestroom Construction Manager; Materials Manager; Assistant Construction Manager; Assistant Project Management | 1280h | 208,000 |
| 112 | 7.4.32 | Receive Approval on 5th Floor Guestrooms |  | 1d | 2023-05-17 | 2023-05-17 | 111 | 0d | Sponsor | 8h |  |
| 113 | 7.4.33 | Receive Inspection Sign Off on 5th Floor Guestrooms |  | 1d | 2023-05-18 | 2023-05-18 | 112 | 149d | Project Manager; Assistant Project Management | 16h | 600 |
| 114 | 7.4.34 | Demo Guestrooms on 4th Floor |  | 5d | 2023-05-18 | 2023-05-24 | 112 | 0d | Construction Worker 1; Construction Worker 2; Construction Worker 3; Construction Worker 4; Guestroom Construction Manager; Assistant Construction Manager | 240h | 11,000 |
| 115 | 7.4.35 | Refurbish Guestrooms on 4th Floor |  | 20d | 2023-05-25 | 2023-06-21 | 114 | 0d | Guestroom Materials [9%]; Construction Worker 1; Construction Worker 2; Construction Worker 3; Construction Worker 4; Guestroom Construction Manager; Materials Manager; Assistant Construction Manager; Assistant Project Management | 1280h | 208,000 |
| 116 | 7.4.36 | Receive Approval on 4th Floor Guestrooms |  | 1d | 2023-06-22 | 2023-06-22 | 115 | 0d | Sponsor | 8h |  |
| 117 | 7.4.37 | Receive Inspection Sign Off on 4th Floor Guestrooms |  | 1d | 2023-06-23 | 2023-06-23 | 116 | 123d | Project Manager; Assistant Project Management | 16h | 600 |
| 118 | 7.4.38 | Demo Guestrooms on 3rd Floor |  | 5d | 2023-06-23 | 2023-06-29 | 116 | 0d | Construction Worker 1; Construction Worker 2; Construction Worker 3; Construction Worker 4; Guestroom Construction Manager; Assistant Construction Manager | 240h | 11,000 |
| 119 | 7.4.39 | Refurbish Guestrooms on 3rd Floor |  | 20d | 2023-06-30 | 2023-07-27 | 118 | 0d | Guestroom Materials [9%]; Construction Worker 1; Construction Worker 2; Construction Worker 3; Construction Worker 4; Guestroom Construction Manager; Materials Manager; Assistant Construction Manager; Assistant Project Management | 1280h | 208,000 |
| 120 | 7.4.40 | Receive Approval on 3rd Floor Guestrooms |  | 1d | 2023-07-28 | 2023-07-28 | 119 | 0d | Sponsor | 8h |  |
| 121 | 7.4.41 | Receive Inspection Sign Off on 3rd Floor Guestrooms |  | 1d | 2023-07-31 | 2023-07-31 | 120 | 97d | Project Manager; Assistant Project Management | 16h | 600 |
| 122 | 7.4.42 | Demo Guestrooms on 2nd Floor |  | 5d | 2023-07-31 | 2023-08-04 | 120 | 0d | Construction Worker 1; Construction Worker 2; Construction Worker 3; Construction Worker 4; Guestroom Construction Manager; Assistant Construction Manager | 240h | 11,000 |
| 123 | 7.4.43 | Refurbish Guestrooms on 2nd Floor |  | 20d | 2023-08-07 | 2023-09-01 | 122 | 0d | Guestroom Materials [9%]; Construction Worker 1; Construction Worker 2; Construction Worker 3; Construction Worker 4; Guestroom Construction Manager; Materials Manager; Assistant Construction Manager; Assistant Project Management | 1280h | 208,000 |
| 124 | 7.4.44 | Receive Approval on 2nd Floor Guestrooms |  | 1d | 2023-09-04 | 2023-09-04 | 123 | 0d | Sponsor | 8h |  |
| 125 | 7.4.45 | Receive Inspection Sign Off on 2nd Floor Guestrooms |  | 1d | 2023-09-05 | 2023-09-05 | 124 | 71d | Project Manager; Assistant Project Management | 16h | 600 |
| 126 | 7.4.46 | Guestroom Refurbishment Complete | milestone | 0d | 2023-09-04 | 2023-09-04 | 124 | 0d |  |  |  |

Notes:
- 81: In order to minimize guest disruption during the guestroom renovation, Project Team must coordinate with Hotel Operations Team in order to shut down 3 floors at a time for renovation (the floor actually being renovated and the floors above and below it to act as a buffer). This will occur throughout the guestroom renovation deliverable until complete.

| ID | WBS | Task | Type | Duration | Start | Finish | Predecessors | Total slack | Free slack | Resources | Work | Cost |
| --- | --- | --- | --- | --- | --- | --- | --- | --- | --- | --- | --- | --- |
| 127 | 7.5 | **Lobby Refurbishment** |  | 62d | 2023-09-05 | 2023-11-29 |  | 12d |  |  | 3696h | 684,000 |
| 128 | 7.5.1 | Demo Lobby |  | 20d | 2023-09-05 | 2023-10-02 | 126 | 10d | 0d | Assistant Construction Manager; Assistant Project Management; Construction Worker 1; Construction Worker 2; Construction Worker 3; Construction Worker 4; Lobby Construction Manager | 1120h | 56,000 |
| 129 | 7.5.2 | Refurbish Lobby |  | 40d | 2023-10-03 | 2023-11-27 | 128 | 10d | 0d | Lobby Materials; Assistant Construction Manager; Assistant Project Management; Construction Worker 1; Construction Worker 2; Construction Worker 3; Construction Worker 4; Lobby Construction Manager; Materials Manager | 2560h | 628,000 |
| 130 | 7.5.3 | Receive Approval on Lobby Refurbishment |  | 1d | 2023-11-28 | 2023-11-28 | 129 | 10d | 0d | Sponsor | 8h |  |
| 131 | 7.5.4 | Receive Inspection Sign Off on Lobby |  | 1d | 2023-11-29 | 2023-11-29 | 130 | 10d |  | Project Manager | 8h |  |
| 132 | 7.5.5 | Lobby Refurbishment Complete | milestone | 0d | 2023-11-28 | 2023-11-28 | 130 | 11d |  | Project Manager |  |  |
| 133 | 7.6 | **Meeting Space Refurbishment** |  | 65d | 2023-09-05 | 2023-12-04 |  | 0d |  |  | 3752h | 1,086,400 |
| 134 | 7.6.1 | Coordinate with Sales Team to Ensure No Events/Meetings Occuring in the Space |  | 3d | 2023-09-05 | 2023-09-07 | 126 | 0d |  | Project Manager; Assistant Project Management | 48h | 1,800 |
| 135 | 7.6.2 | Demo Meeting Space |  | 20d | 2023-09-08 | 2023-10-05 | 134 | 0d |  | Assistant Construction Manager; Assistant Project Management; Construction Worker 1; Construction Worker 2; Construction Worker 3; Construction Worker 4; Meeting Space Construction Manager | 1120h | 56,000 |
| 136 | 7.6.3 | Refurbish Meeting Space |  | 40d | 2023-10-06 | 2023-11-30 | 135 | 0d |  | Meeting Space Materials; Assistant Construction Manager; Assistant Project Management; Construction Worker 1; Construction Worker 2; Construction Worker 3; Construction Worker 4; Meeting Space Construction Manager; Materials Manager | 2560h | 1,028,000 |
| 137 | 7.6.4 | Receive Approval on Meeting Space Refurbishment |  | 1d | 2023-12-01 | 2023-12-01 | 136 | 0d |  | Sponsor | 8h |  |
| 138 | 7.6.5 | Receive Inpsection Sign Off on Meeting Space |  | 1d | 2023-12-04 | 2023-12-04 | 137 | 7d |  | Project Manager; Assistant Project Management | 16h | 600 |
| 139 | 7.6.6 | Meeting Space Refurbishment Complete | milestone | 0d | 2023-12-01 | 2023-12-01 | 137 | 0d |  |  |  |  |
| 140 | 7.7 | Refurbishment Complete | milestone | 0d | 2023-12-01 | 2023-12-01 | 139 | 0d |  |  |  |  |
| 141 | 8 | Sponsor Sign Off | milestone | 0d | 2023-12-01 | 2023-12-01 | 140 | 0d |  | Sponsor |  |  |
| 142 | 9 | **Lessons Learned** |  | 4d | 2023-12-04 | 2023-12-07 |  | 0d |  |  | 296h | 23,520 |
| 143 | 9.1 | Host Meeting |  | 1d | 2023-12-04 | 2023-12-04 | 141 | 0d |  | Project Manager | 8h |  |
| 144 | 9.2 | Document Lessons Learned |  | 3d | 2023-12-05 | 2023-12-07 | 143 | 0d |  | Project Manager; Assistant Construction Manager; Assistant Project Management; Compset Researcher; Designer 1; Designer 2; Designer 3; Guestroom Construction Manager; Lobby Construction Manager; Local Researcher; Materials Manager; Meeting Space Construction Manager | 288h | 23,520 |
| 145 | 9.3 | Lessons Learned Complete | milestone | 0d | 2023-12-07 | 2023-12-07 | 144 | 0d |  |  |  |  |
| 146 | 10 | Host Meeting to Celebrate Project Completion with Project Team |  | 4d | 2023-12-08 | 2023-12-13 | 145 | 0d |  | Project Manager; Assistant Construction Manager; Assistant Project Management; Compset Researcher; Construction Worker 1; Construction Worker 2; Construction Worker 3; Construction Worker 4; Designer 1; Designer 2; Designer 3; Guestroom Construction Manager; Lobby Construction Manager; Local Researcher; Materials Manager; Meeting Space Construction Manager; Catering; Conference Room | 512h | 39,200 |
| 147 | 11 | Close Cost Accounts |  | 1d | 2023-12-14 | 2023-12-14 | 146 | 0d |  | Project Manager; Assistant Project Management | 16h | 600 |
| 148 | 12 | Close Project |  | 1d | 2023-12-15 | 2023-12-15 | 147 | 0d |  | Project Manager; Assistant Project Management | 16h | 600 |
| 149 | 13 | Project Complete | milestone | 0d | 2023-12-15 | 2023-12-15 | 148 | 0d |  |  |  |  |
